# Template Novo Projeto ou Melhoria

Schedule from MS Project, 2013-08-13 to 2013-10-29, costs in R$.

## Calendars

- Standard: Mon-Fri 08:00-12:00, 13:00-17:00; Sat-Sun off.

## Resources

| Resource | Rate |
| --- | --- |
| Gerente Projeto | 1 |
| MME/CTSI | 1 |
| Analista de Métricas | 1 |
| Analiste de Testes - CTIS | 1 |
| Analiste de Testes - RSI | 1 |
| Analista Responsável | 1 |
| Analista de GCM | 1 |
| Analista Database Designer | 1 |
| MME/Cliente | 1 |
| Equipe do Projeto | 1 |
| Analista de Requisitos | 1 |
| Analista Desenvolvedor | 1 |
| Coordenador de Infraestrutura | 1 |
| Designer de Interface | 1 |
| Documentador | 1 |
| Arquiteto de Software | 1 |

## Schedule

| ID | WBS | Task | Type | Duration | Start | Finish | Predecessors | Baseline start | Baseline finish | Baseline duration | Total slack | Free slack | Resources | Work | Cost | Baseline cost | % Realizado | % Utilizado | % Previsto | Status Atual |
| --- | --- | --- | --- | --- | --- | --- | --- | --- | --- | --- | --- | --- | --- | --- | --- | --- | --- | --- | --- | --- |
| 1 | 1 | **Gerenciamento do Projeto** |  | 56d? | 2013-08-13 | 2013-10-29 |  |  |  |  | 0d |  |  | 160h | 160 |  | 0% | 0% |  |  |
| 2 | 1.1 | **Iniciação do Projeto** |  | 2d? | 2013-08-13 | 2013-08-14 |  | 2006-10-02 | 2006-10-03 | 2d | 0d |  |  | 16h | 16 | 16 | 0% | 0% | 100% | Atrasado |
| 3 | 1.1.1 | Início do Projeto | milestone | 0d | 2013-08-13 | 2013-08-13 |  | 2006-10-02 | 2006-10-02 | 0d | 0d |  | Gerente Projeto |  |  |  | 0% | 0% |  |  |
| 4 | 1.1.2 | Receber OS |  | 1d? | 2013-08-13 | 2013-08-13 | 3 |  |  |  | 0d |  | Gerente Projeto | 8h | 8 |  | 0% | 0% |  |  |
| 5 | 1.1.3 | Termo de Abertura |  | 1d? | 2013-08-14 | 2013-08-14 | 4 |  |  |  | 44d | 0d | Gerente Projeto | 8h | 8 |  | 0% | 0% |  |  |
| 6 | 1.2 | **Planejamento do Projeto** |  | 10d? | 2013-08-15 | 2013-08-28 |  | 2006-10-04 | 2006-10-30 | 18d | 44d | 0d |  | 72h | 72 | 232 | 0% | 0% | 100% | Atrasado |
| 7 | 1.2.1 | Elaborar Planejamento de Riscos |  | 1d? | 2013-08-15 | 2013-08-15 | 5 |  |  |  | 44d | 0d | Gerente Projeto | 8h | 8 |  | 0% | 0% |  |  |
| 8 | 1.2.2 | Elaborar Planejamento de Problemas |  | 1d? | 2013-08-16 | 2013-08-16 | 7 |  |  |  | 44d | 0d | Gerente Projeto | 8h | 8 |  | 0% | 0% |  |  |
| 9 | 1.2.3 | Elaborar Plano de Comunicações do Projeto – Planejamento de Comunicações |  | 1d? | 2013-08-19 | 2013-08-19 | 8 |  |  |  | 44d | 0d | Gerente Projeto | 8h | 8 |  | 0% | 0% |  |  |
| 10 | 1.2.4 | Elaborar Cronograma – Planejamento de Tempo do Projeto |  | 1d? | 2013-08-20 | 2013-08-20 | 9 |  |  |  | 44d | 0d | Gerente Projeto | 8h | 8 |  | 0% | 0% |  |  |
| 11 | 1.2.5 | Elaborar Plano de Gerenciamento da Qualidade do Projeto – Planejamento da Qualidade |  | 1d? | 2013-08-21 | 2013-08-21 | 10 |  |  |  | 44d | 0d | Gerente Projeto | 8h | 8 |  | 0% | 0% |  |  |
| 12 | 1.2.6 | Elaborar Plano de Custos do Projeto – Gerenciamento de Custos |  | 1d? | 2013-08-22 | 2013-08-22 | 11 |  |  |  | 44d | 0d | Gerente Projeto | 8h | 8 |  | 0% | 0% |  |  |
| 13 | 1.2.7 | Elaborar Plano do Projeto – Consolidação do Planejamento do Projeto |  | 1d? | 2013-08-23 | 2013-08-23 | 12 |  |  |  | 44d | 0d | Gerente Projeto | 8h | 8 |  | 0% | 0% |  |  |
| 14 | 1.2.8 | Revisar Plano do Projeto |  | 1d? | 2013-08-26 | 2013-08-26 | 13 |  |  |  | 44d | 0d | Gerente Projeto | 8h | 8 |  | 0% | 0% |  |  |
| 15 | 1.2.9 | Realizar Reunião de Consolidação |  | 1d? | 2013-08-27 | 2013-08-27 | 14 |  |  |  | 44d | 0d |  |  |  |  | 0% | 0% |  |  |
| 16 | 1.2.10 | Homologar Plano do Projeto |  | 1d? | 2013-08-28 | 2013-08-28 | 15 |  |  |  | 44d |  | Gerente Projeto | 8h | 8 |  | 0% | 0% |  |  |
| 17 | 1.3 | **Controle do Projeto** |  | 56d? | 2013-08-13 | 2013-10-29 |  | 2006-10-02 | 2007-12-07 | 309d | 0d |  |  | 56h | 56 |  | 0% | 0% |  |  |
| 18 | 1.3.1 | **Dependências Gerais - Cliente** |  | 0d | 2013-08-13 | 2013-08-13 |  | 2006-10-30 | 2006-10-30 | 0d | 56d |  |  |  |  |  | 0% | 0% |  |  |
| 19 | 1.3.1.1 | Dependência Geral 01 | milestone | 0d | 2013-08-13 | 2013-08-13 |  | 2006-10-30 | 2006-10-30 | 0d | 56d |  | MME/Cliente; MME/CTSI |  |  |  | 0% | 0% |  |  |
| 20 | 1.3.2 | **Marcos do Projeto** |  | 56d | 2013-08-13 | 2013-10-29 |  | 2006-10-02 | 2007-12-07 | 309d | 0d |  |  |  |  |  | 0% | 0% |  |  |
| 21 | 1.3.2.1 | Início do Projeto | milestone | 0d | 2013-08-13 | 2013-08-13 | 3SS | 2006-10-02 | 2006-10-02 | 0d | 56d |  | Gerente Projeto |  |  |  | 0% | 0% |  |  |
| 22 | 1.3.2.2 | Início do Planejamento | milestone | 0d | 2013-08-15 | 2013-08-15 | 6SS | 2006-10-04 | 2006-10-04 | 0d | 54d |  | Gerente Projeto |  |  |  | 0% | 0% |  |  |
| 23 | 1.3.2.3 | Término do Planejamento | milestone | 0d | 2013-08-28 | 2013-08-28 | 6FF | 2006-10-30 | 2006-10-30 | 0d | 44d |  | Gerente Projeto |  |  |  | 0% | 0% |  |  |
| 24 | 1.3.2.4 | Encerramento do Projeto | milestone | 0d | 2013-10-29 | 2013-10-29 | 40 | 2007-12-07 | 2007-12-07 | 0d | 0d |  | Gerente Projeto |  |  |  | 0% | 0% |  |  |

| ID | WBS | Task | Type | Duration | Start | Finish | Predecessors | Baseline start | Baseline finish | Baseline duration | Total slack | Constraint | Resources | Work | Cost | Baseline cost | % Realizado | % Utilizado | % Previsto | Status Atual |
| --- | --- | --- | --- | --- | --- | --- | --- | --- | --- | --- | --- | --- | --- | --- | --- | --- | --- | --- | --- | --- |
| 25 | 1.3.3 | **Atualização Documentação Projeto** |  | 1d | 2013-09-27 | 2013-09-30 |  | 2006-11-06 | 2007-02-05 | 65d | 21.88d |  |  | 8h | 8 |  | 0% | 0% |  |  |
| 26 | 1.3.3.1 | Atualização Documentação Projeto 1 |  | 1d | 2013-09-27 | 2013-09-30 |  |  |  |  | 21.88d | start no earlier than 2013-09-27 | Gerente Projeto | 8h | 8 |  | 0% | 0% |  |  |
| 27 | 1.3.4 | **Relatório de Acompanhamento Gerencial (Status Report)** |  | 1d | 2013-09-30 | 2013-10-01 |  | 2006-11-06 | 2007-02-05 | 65d | 20.88d |  |  | 8h | 8 |  | 0% | 0% |  |  |
| 28 | 1.3.4.1 | Relatório de Acompanhamento Gerencial (Status Report) |  | 1d | 2013-09-30 | 2013-10-01 |  |  |  |  | 20.88d | start no earlier than 2013-09-30 | Gerente Projeto | 8h | 8 |  | 0% | 0% |  |  |
| 29 | 1.3.5 | **Gestão de Mudanças (Análise de Impacto e Aprovação da Mudança)** |  | 1d? | 2013-08-13 | 2013-08-13 |  |  |  |  | 55d |  |  | 16h | 16 |  | 0% | 0% |  |  |
| 30 | 1.3.5.1 | **Mudança 01** |  | 1d? | 2013-08-13 | 2013-08-13 |  |  |  |  | 55d |  |  | 16h | 16 |  | 0% | 0% |  |  |
| 31 | 1.3.5.1.1 | Elaborar Relatório de Impacto |  | 1d? | 2013-08-13 | 2013-08-13 |  |  |  |  | 55d |  | Analista de Requisitos | 8h | 8 |  | 0% | 0% |  |  |
| 32 | 1.3.5.1.2 | Revisar Relatório de Impacto |  | 1d? | 2013-08-13 | 2013-08-13 |  |  |  |  | 55d |  | Analista de Requisitos | 8h | 8 |  | 0% | 0% |  |  |
| 33 | 1.3.6 | **Reuniões Realizadas (Total em UST - Fase de Iniciação e Elaboração)** |  | 1d? | 2013-08-13 | 2013-08-13 |  |  |  |  | 55d |  |  | 24h | 24 |  | 0% | 0% |  |  |
| 34 | 1.3.6.1 | Realizar Reunião |  | 1d? | 2013-08-13 | 2013-08-13 |  |  |  |  | 55d |  | Analista de Requisitos | 8h | 8 |  | 0% | 0% |  |  |
| 35 | 1.3.6.2 | Elaborar Ata de Reunião |  | 1d? | 2013-08-13 | 2013-08-13 |  |  |  |  | 55d |  | Analista de Requisitos | 8h | 8 |  | 0% | 0% |  |  |
| 36 | 1.3.6.3 | Revisar Ata de Reunião |  | 1d? | 2013-08-13 | 2013-08-13 |  |  |  |  | 55d |  | Analista de Requisitos | 8h | 8 |  | 0% | 0% |  |  |
| 37 | 1.4 | **Encerramento do Projeto** |  | 2d? | 2013-10-28 | 2013-10-29 |  | 2006-12-18 | 2007-12-07 | 255d | 0d |  |  | 16h | 16 | 424 | 0% | 0% | 100% | Atrasado |
| 38 | 1.4.1 | Liçoes Aprendidas |  | 1d? | 2013-10-28 | 2013-10-28 | 130 | 2007-12-03 | 2007-12-04 | 2d | 0d |  | Equipe do Projeto | 8h | 8 | 16 | 0% | 0% | 100% | Atrasado |
| 39 | 1.4.2 | Assinar Termo de Encerramento do Projeto |  | 1d? | 2013-10-29 | 2013-10-29 | 38 |  |  |  | 0d |  | MME/CTSI | 8h | 8 |  | 0% | 0% |  |  |
| 40 | 1.4.3 | Fim do Projeto | milestone | 0d | 2013-10-29 | 2013-10-29 | 39 | 2007-12-07 | 2007-12-07 | 0d | 0d |  | Gerente Projeto |  |  |  | 0% | 0% |  |  |
| 41 | 2 | **Iniciação** |  | 13d? | 2013-08-14 | 2013-08-30 |  |  |  |  | 0d |  |  | 168h | 168 |  | 0% | 0% |  |  |
| 42 | 2.1 | **Elaboração dos Artefatos** |  | 13d? | 2013-08-14 | 2013-08-30 |  |  |  |  | 0d |  |  | 104h | 104 |  | 0% | 0% |  |  |
| 43 | 2.1.1 | Elaborar Documento de Visão |  | 5d | 2013-08-14 | 2013-08-20 | 4 |  |  |  | 0d |  | Analista de Requisitos | 40h | 40 |  | 0% | 0% |  |  |
| 44 | 2.1.2 | Elaborar Glossário |  | 1d | 2013-08-21 | 2013-08-21 | 43 |  |  |  | 0d |  | Analista de Requisitos | 8h | 8 |  | 0% | 0% |  |  |
| 45 | 2.1.3 | Elaborar Lista de Requisitos |  | 1d? | 2013-08-22 | 2013-08-22 | 44 |  |  |  | 0d |  | Analista de Requisitos | 8h | 8 |  | 0% | 0% |  |  |
| 46 | 2.1.4 | Elaborar Diagrama de Casos de Uso |  | 1d? | 2013-08-23 | 2013-08-23 | 45 |  |  |  | 0d |  | Analista de Requisitos | 8h | 8 |  | 0% | 0% |  |  |
| 47 | 2.1.5 | Elaborar Plano de Iterações |  | 1d? | 2013-08-26 | 2013-08-26 | 46 |  |  |  | 0d |  | Analista de Requisitos | 8h | 8 |  | 0% | 0% |  |  |
| 48 | 2.1.6 | Realizar Contagem Estimada |  | 4d | 2013-08-27 | 2013-08-30 | 47 |  |  |  | 42d |  | Analista de Métricas | 32h | 32 |  | 0% | 0% |  |  |

| ID | WBS | Task | Duration | Start | Finish | Predecessors | Total slack | Free slack | Resources | Work | Cost | % Realizado | % Utilizado |
| --- | --- | --- | --- | --- | --- | --- | --- | --- | --- | --- | --- | --- | --- |
| 49 | 2.2 | **Revisão Técnica** | 5d? | 2013-08-21 | 2013-08-27 |  | 4d |  |  | 40h | 40 | 0% | 0% |
| 50 | 2.2.1 | Revisar Documento de Visão | 1d | 2013-08-21 | 2013-08-21 | 43 | 49d |  | Analista de Requisitos | 8h | 8 | 0% | 0% |
| 51 | 2.2.2 | Revisar Glossário | 1d | 2013-08-22 | 2013-08-22 | 44 | 48d |  | Analista de Requisitos | 8h | 8 | 0% | 0% |
| 52 | 2.2.3 | Revisar Lista de Requisitos | 1d? | 2013-08-23 | 2013-08-23 | 45 | 47d |  | Analista de Requisitos | 8h | 8 | 0% | 0% |
| 53 | 2.2.4 | Revisar Diagrama de Casos de Uso | 1d? | 2013-08-26 | 2013-08-26 | 46 | 46d |  | Analista de Requisitos | 8h | 8 | 0% | 0% |
| 54 | 2.2.5 | Revisar Plano de Iterações | 1d? | 2013-08-27 | 2013-08-27 | 47 | 0d |  | Analista de Requisitos | 8h | 8 | 0% | 0% |
| 55 | 2.3 | Realizar Reunião de Consolidação | 1d? | 2013-08-28 | 2013-08-28 | 54 | 0d |  | Analista de Requisitos; Analista Desenvolvedor; Analiste de Testes - CTIS; Arquiteto de Software | 8h | 8 | 0% | 0% |
| 56 | 2.4 | Homologar Artefatos da Iniciação | 1d | 2013-08-29 | 2013-08-29 | 55 | 0d |  | MME/Cliente | 8h | 8 | 0% | 0% |
| 57 | 2.5 | Gerar Release de Entrega - Iniciação | 1d? | 2013-08-30 | 2013-08-30 | 56 | 0d |  | Analista de GCM | 8h | 8 | 0% | 0% |
| 58 | 3 | **Iteração XX** | 40d? | 2013-09-02 | 2013-10-25 |  | 0d |  |  | 544h | 544 | 0% | 0% |
| 59 | 3.1 | **Elaboração** | 15d? | 2013-09-02 | 2013-09-20 |  | 0d |  |  | 272h | 272 | 0% | 0% |
| 60 | 3.1.1 | **Elaboração dos Artefatos** | 11d? | 2013-09-02 | 2013-09-16 |  | 0d |  |  | 88h | 88 | 0% | 0% |
| 61 | 3.1.1.1 | Elaborar Protótipo Não Funcional | 1d? | 2013-09-02 | 2013-09-02 | 57 | 0d |  | Analista de Requisitos | 8h | 8 | 0% | 0% |
| 62 | 3.1.1.2 | Elaborar Lista de Requisitos Funcionais | 1d? | 2013-09-03 | 2013-09-03 | 61 | 0d |  | Analista de Requisitos | 8h | 8 | 0% | 0% |
| 63 | 3.1.1.3 | Elaborar Protótipo Funcional | 1d? | 2013-09-04 | 2013-09-04 | 62 | 0d |  | Designer de Interface | 8h | 8 | 0% | 0% |
| 64 | 3.1.1.4 | Elaborar Lista de Requisitos Não Funcionais | 1d? | 2013-09-05 | 2013-09-05 | 63 | 0d |  | Analista de Requisitos | 8h | 8 | 0% | 0% |
| 65 | 3.1.1.5 | Elaborar Especificação de Caso de Uso | 1d? | 2013-09-06 | 2013-09-06 | 64 | 0d |  | Analista de Requisitos | 8h | 8 | 0% | 0% |
| 66 | 3.1.1.6 | Elaborar Regras de Negócio | 1d? | 2013-09-09 | 2013-09-09 | 65 | 0d |  | Analista de Requisitos | 8h | 8 | 0% | 0% |
| 67 | 3.1.1.7 | Elaborar Lista de Mensagens | 1d? | 2013-09-10 | 2013-09-10 | 66 | 0d |  | Analista de Requisitos | 8h | 8 | 0% | 0% |
| 68 | 3.1.1.8 | Elaborar MER Lógico | 1d? | 2013-09-11 | 2013-09-11 | 67 | 0d |  | Analista Database Designer | 8h | 8 | 0% | 0% |
| 69 | 3.1.1.9 | Elaborar Plano de Teste | 1d? | 2013-09-12 | 2013-09-12 | 68 | 0d |  | Analista de Requisitos | 8h | 8 | 0% | 0% |
| 70 | 3.1.1.10 | Elaborar Roteiro de Teste | 1d? | 2013-09-13 | 2013-09-13 | 69 | 0d |  | Analista de Requisitos | 8h | 8 | 0% | 0% |
| 71 | 3.1.1.11 | Elaborar Matriz de Rastreabilidade | 1d? | 2013-09-16 | 2013-09-16 | 70 | 0d |  | Analista de Requisitos | 8h | 8 | 0% | 0% |
| 72 | 3.1.2 | **Revisão Técnica** | 11d? | 2013-09-03 | 2013-09-17 |  | 10d |  |  | 80h | 80 | 0% | 0% |
| 73 | 3.1.2.1 | Revisar Protótipo Não Funcional | 1d? | 2013-09-03 | 2013-09-03 | 61 | 39d | 0d | Analista de Requisitos | 8h | 8 | 0% | 0% |
| 74 | 3.1.2.2 | Revisar Lista de Requisitos Funcionais | 1d? | 2013-09-04 | 2013-09-04 | 62 | 38d | 0d | Analista de Requisitos | 8h | 8 | 0% | 0% |
| 75 | 3.1.2.3 | Revisar Lista de Requisitos Não Funcionais | 1d? | 2013-09-06 | 2013-09-06 | 64 | 36d | 0d | Analista de Requisitos | 8h | 8 | 0% | 0% |
| 76 | 3.1.2.4 | Revisar Especificação de Caso de Uso | 1d? | 2013-09-09 | 2013-09-09 | 65 | 35d | 0d | Analista de Requisitos | 8h | 8 | 0% | 0% |
| 77 | 3.1.2.5 | Revisar Regras de Negócio | 1d? | 2013-09-10 | 2013-09-10 | 66 | 34d | 0d | Analista de Requisitos | 8h | 8 | 0% | 0% |
| 78 | 3.1.2.6 | Revisar Lista de Mensagens | 1d? | 2013-09-11 | 2013-09-11 | 67 | 33d | 0d | Analista de Requisitos | 8h | 8 | 0% | 0% |
| 79 | 3.1.2.7 | Revisar MER Lógico | 1d? | 2013-09-12 | 2013-09-12 | 68 | 32d | 0d | Analista Database Designer | 8h | 8 | 0% | 0% |
| 80 | 3.1.2.8 | Revisar Plano de Teste | 1d? | 2013-09-13 | 2013-09-13 | 69 | 31d | 0d | Analista de Requisitos | 8h | 8 | 0% | 0% |
| 81 | 3.1.2.9 | Revisar Roteiro de Teste | 1d? | 2013-09-16 | 2013-09-16 | 70 | 30d | 0d | Analista de Requisitos | 8h | 8 | 0% | 0% |
| 82 | 3.1.2.10 | Revisar Matriz de Rastreabilidade | 1d? | 2013-09-17 | 2013-09-17 | 71 | 0d |  | Analista de Requisitos | 8h | 8 | 0% | 0% |

| ID | WBS | Task | Duration | Start | Finish | Predecessors | Total slack | Resources | Work | Cost | % Realizado | % Utilizado |
| --- | --- | --- | --- | --- | --- | --- | --- | --- | --- | --- | --- | --- |
| 83 | 3.1.3 | **Homologação de Artefatos** | 11d? | 2013-09-04 | 2013-09-18 |  | 10d |  | 88h | 88 | 0% | 0% |
| 84 | 3.1.3.1 | Homologar Protótipo Não Funcional | 1d? | 2013-09-04 | 2013-09-04 | 73 | 39d | Analista de Requisitos | 8h | 8 | 0% | 0% |
| 85 | 3.1.3.2 | Homologar Lista de Requisitos Funcionais | 1d? | 2013-09-05 | 2013-09-05 | 74 | 38d | Analista de Requisitos | 8h | 8 | 0% | 0% |
| 86 | 3.1.3.3 | Homologar Protótipo Funcional | 1d? | 2013-09-05 | 2013-09-05 | 63 | 38d | Designer de Interface | 8h | 8 | 0% | 0% |
| 87 | 3.1.3.4 | Homologar Lista de Requisitos Não Funcionais | 1d? | 2013-09-09 | 2013-09-09 | 75 | 36d | Analista de Requisitos | 8h | 8 | 0% | 0% |
| 88 | 3.1.3.5 | Homologar Especificação de Caso de Uso | 1d? | 2013-09-10 | 2013-09-10 | 76 | 35d | Analista de Requisitos | 8h | 8 | 0% | 0% |
| 89 | 3.1.3.6 | Homologar Regras de Negócio | 1d? | 2013-09-11 | 2013-09-11 | 77 | 34d | Analista de Requisitos | 8h | 8 | 0% | 0% |
| 90 | 3.1.3.7 | Homologar Lista de Mensagens | 1d? | 2013-09-12 | 2013-09-12 | 78 | 33d | Analista de Requisitos | 8h | 8 | 0% | 0% |
| 91 | 3.1.3.8 | Homologar MER Lógico | 1d? | 2013-09-13 | 2013-09-13 | 79 | 32d | Analista Database Designer | 8h | 8 | 0% | 0% |
| 92 | 3.1.3.9 | Homologar Plano de Teste | 1d? | 2013-09-16 | 2013-09-16 | 80 | 31d | Analista de Requisitos | 8h | 8 | 0% | 0% |
| 93 | 3.1.3.10 | Homologar Roteiro de Teste | 1d? | 2013-09-17 | 2013-09-17 | 81 | 30d | Analista de Requisitos | 8h | 8 | 0% | 0% |
| 94 | 3.1.3.11 | Homologar Matriz de Rastreabilidade | 1d? | 2013-09-18 | 2013-09-18 | 82 | 0d | Analista de Requisitos | 8h | 8 | 0% | 0% |
| 95 | 3.1.4 | Realizar Contagem Detalhada | 1d? | 2013-09-19 | 2013-09-19 | 94 | 0d | Analista de Métricas | 8h | 8 | 0% | 0% |
| 96 | 3.1.5 | Gerar Release de Entrega - Elaboração | 1d? | 2013-09-20 | 2013-09-20 | 95 | 0d | Analista de GCM | 8h | 8 | 0% | 0% |
| 97 | 3.2 | **Construção** | 11d? | 2013-09-23 | 2013-10-07 |  | 0d |  | 136h | 136 | 0% | 0% |
| 98 | 3.2.1 | **Elaboração dos Artefatos** | 9d? | 2013-09-23 | 2013-10-03 |  | 0d |  | 72h | 72 | 0% | 0% |
| 99 | 3.2.1.1 | Elaborar Documento de Arquitetura do Sistema | 2d | 2013-09-23 | 2013-09-24 | 96 | 0d | Arquiteto de Software | 16h | 16 | 0% | 0% |
| 100 | 3.2.1.2 | Elaborar MER Físico | 1d? | 2013-09-25 | 2013-09-25 | 99 | 0d | Analista Database Designer | 8h | 8 | 0% | 0% |
| 101 | 3.2.1.3 | Implementar Código Fonte | 1d? | 2013-09-26 | 2013-09-26 | 100 | 0d | Analista Desenvolvedor | 8h | 8 | 0% | 0% |
| 102 | 3.2.1.4 | Preparar Ambiente de Testes | 1d? | 2013-09-27 | 2013-09-27 | 101 | 0d | Analiste de Testes - CTIS | 8h | 8 | 0% | 0% |
| 103 | 3.2.1.5 | Elaborar Evidências de Testes Unitários Funcionais | 1d? | 2013-09-30 | 2013-09-30 | 102 | 0d | Analiste de Testes - CTIS | 8h | 8 | 0% | 0% |
| 104 | 3.2.1.6 | Elaborar Sumário de Avaliação de Testes | 1d? | 2013-10-01 | 2013-10-01 | 103 | 0d | Analiste de Testes - CTIS | 8h | 8 | 0% | 0% |
| 105 | 3.2.1.7 | Elaborar Plano de Implantação (Formulário de Instalação da Aplicacação) | 1d? | 2013-10-02 | 2013-10-02 | 104 | 0d | Analista Desenvolvedor | 8h | 8 | 0% | 0% |
| 106 | 3.2.1.8 | Elaborar Manual de Usuário (Help Online) | 1d? | 2013-10-03 | 2013-10-03 | 105 | 0d | Documentador | 8h | 8 | 0% | 0% |

| ID | WBS | Task | Duration | Start | Finish | Predecessors | Total slack | Resources | Work | Cost | % Realizado | % Utilizado |
| --- | --- | --- | --- | --- | --- | --- | --- | --- | --- | --- | --- | --- |
| 107 | 3.2.2 | **Revisão Técnica** | 8d? | 2013-09-25 | 2013-10-04 |  | 7d |  | 56h | 56 | 0% | 0% |
| 108 | 3.2.2.1 | Revisar Documento de Arquitetura do Sistema | 1d? | 2013-09-25 | 2013-09-25 | 99 | 24d | Arquiteto de Software | 8h | 8 | 0% | 0% |
| 109 | 3.2.2.2 | Revisar MER Físico | 1d? | 2013-09-26 | 2013-09-26 | 100 | 23d | Analista Desenvolvedor | 8h | 8 | 0% | 0% |
| 110 | 3.2.2.3 | Revisar Código Fonte | 1d? | 2013-09-27 | 2013-09-27 | 101 | 22d | Analista Desenvolvedor | 8h | 8 | 0% | 0% |
| 111 | 3.2.2.4 | Revisar Evidências de Testes Unitários Funcionais | 1d? | 2013-10-01 | 2013-10-01 | 103 | 20d | Analiste de Testes - CTIS | 8h | 8 | 0% | 0% |
| 112 | 3.2.2.5 | Revisar Sumário de Avaliação de Testes | 1d? | 2013-10-02 | 2013-10-02 | 104 | 19d | Analiste de Testes - CTIS | 8h | 8 | 0% | 0% |
| 113 | 3.2.2.6 | Revisar Plano de Implantação (Formulário de Instalação da Aplicacação) | 1d? | 2013-10-03 | 2013-10-03 | 105 | 18d | Analista Desenvolvedor | 8h | 8 | 0% | 0% |
| 114 | 3.2.2.7 | Revisar Manual de Usuário (Help Online) | 1d? | 2013-10-04 | 2013-10-04 | 106 | 0d | Analista de Requisitos | 8h | 8 | 0% | 0% |
| 115 | 3.2.3 | Homologar Artefatos da Fase de Contrução | 1d? | 2013-10-07 | 2013-10-07 | 114 | 16d | MME/CTSI | 8h | 8 | 0% | 0% |
| 116 | 3.3 | **Testes** | 1d? | 2013-10-07 | 2013-10-07 |  | 0d |  | 8h | 8 | 0% | 0% |
| 117 | 3.3.1 | Realizar Testes - Fábrica de Testes | 1d? | 2013-10-07 | 2013-10-07 | 114 | 0d | Analiste de Testes - RSI | 8h | 8 | 0% | 0% |
| 118 | 3.4 | **Homologação** | 5d | 2013-10-08 | 2013-10-14 |  | 0d |  | 40h | 40 | 0% | 0% |
| 119 | 3.4.1 | Homologar Sistema (Termo de Homologação) | 5d | 2013-10-08 | 2013-10-14 | 117 | 0d | Analista de Requisitos | 40h | 40 | 0% | 0% |
| 120 | 3.5 | **Repasse de Tecnologia** | 4d? | 2013-10-15 | 2013-10-18 |  | 0d |  | 40h | 40 | 0% | 0% |
| 121 | 3.5.1 | Elaborar Plano de Repasse de Tecnologia | 1d? | 2013-10-15 | 2013-10-15 | 119 | 0d | Analista de Requisitos | 8h | 8 | 0% | 0% |
| 122 | 3.5.2 | Revisar Plano de Repasse de Tecnologia | 1d? | 2013-10-16 | 2013-10-16 | 121 | 0d | Analista de Requisitos | 8h | 8 | 0% | 0% |
| 123 | 3.5.3 | Realizar Repasse de Tecnologia | 1d? | 2013-10-17 | 2013-10-17 | 122 | 0d | Analista de Requisitos | 8h | 8 | 0% | 0% |
| 124 | 3.5.4 | Receber Termo de Realização do Repasse de Tecnologia | 1d? | 2013-10-18 | 2013-10-18 | 123 | 0d | MME/Cliente; MME/CTSI | 16h | 16 | 0% | 0% |
| 125 | 3.6 | **Finalização** | 5d? | 2013-10-21 | 2013-10-25 |  | 0d |  | 48h | 48 | 0% | 0% |
| 126 | 3.6.1 | Realizar Contagem Final | 1d? | 2013-10-21 | 2013-10-21 | 124 | 0d | Analista de Métricas | 8h | 8 | 0% | 0% |
| 127 | 3.6.2 | Elaborar Lista de Ocorrências | 1d? | 2013-10-22 | 2013-10-22 | 126 | 0d | Analista de Requisitos | 8h | 8 | 0% | 0% |
| 128 | 3.6.3 | Gerar Release Final | 1d? | 2013-10-23 | 2013-10-23 | 127 | 0d | Analista de GCM | 8h | 8 | 0% | 0% |
| 129 | 3.6.4 | Executar Roll Out (Entrada em Produção) | 1d? | 2013-10-24 | 2013-10-24 | 128 | 0d | Coordenador de Infraestrutura | 8h | 8 | 0% | 0% |
| 130 | 3.6.5 | Assinar Termo de Aceite do Sistema | 1d? | 2013-10-25 | 2013-10-25 | 129 | 0d | MME/Cliente; MME/CTSI | 16h | 16 | 0% | 0% |
